# SOW5

Schedule from MS Project, 2011-05-20 to 2011-07-04, status date 2011-05-20, A marks actual dates.
Grizli777

## Calendars

- Standard: Mon-Fri 08:00-12:00, 13:00-17:00; Sat-Sun off.

## Resources

| Resource |
| --- |
| VladL |
| ArturR |
| VladS |
| EliaK |
| MichaelL |
| VadimS |

## Schedule

| ID | WBS | Task | Type | Duration | Start | Finish | Predecessors | Complete | Remaining | Total slack | Free slack | Resources | Work |
| --- | --- | --- | --- | --- | --- | --- | --- | --- | --- | --- | --- | --- | --- |
| 1 | 1 | **CRM UI** |  | 32d? | 2011-05-20 A | 2011-07-04 |  | 1% | 31.76d? | 0d |  |  | 832h |
| 2 | 1.1 | **Business Domain (Lister, Search Criteria, Viewer, Editor)** |  | 32d? | 2011-05-20 | 2011-07-04 |  |  |  | -4d | 0d |  | 216h |
| 3 | 1.1.1 | Building |  | 2d? | 2011-05-26 | 2011-05-27 |  |  |  | 26d |  | VladL | 16h |
| 4 | 1.1.2 | Roof | inactive | 2d? | 2011-05-30 | 2011-05-31 |  |  |  | 24d |  | VladL | 16h |
| 5 | 1.1.3 | RoofSegment | inactive | 2d? | 2011-06-01 | 2011-06-02 |  |  |  | 22d |  | VladL | 16h |
| 6 | 1.1.4 | Parking |  | 2d? | 2011-06-03 | 2011-06-06 |  |  |  | 20d |  | VladL | 16h |
| 7 | 1.1.5 | Parking Spot |  | 2d? | 2011-06-07 | 2011-06-08 |  |  |  | 18d |  | VladL | 16h |
| 8 | 1.1.6 | Locker Area |  | 2d? | 2011-06-09 | 2011-06-10 |  |  |  | 16d |  | VladL | 16h |
| 9 | 1.1.7 | Locker |  | 2d? | 2011-06-13 | 2011-06-14 |  |  |  | 14d |  | VladL | 16h |
| 10 | 1.1.8 | Pool |  | 2d? | 2011-06-15 | 2011-06-16 |  |  |  | 12d |  | VladL | 16h |
| 11 | 1.1.9 | Boiler | inactive | 2d? | 2011-05-20 | 2011-05-23 |  |  |  | 30d |  | VladL | 16h |
| 12 | 1.1.10 | Unit |  | 2d? | 2011-06-17 | 2011-06-20 |  |  |  | 10d |  | VladL | 16h |
| 13 | 1.1.11 | Tenant |  | 2d? | 2011-06-21 | 2011-06-22 |  |  |  | 8d |  | VladL | 16h |
| 14 | 1.1.12 | Inquiry |  | 2d? | 2011-06-23 | 2011-06-24 |  |  |  | 6d |  | VladL | 16h |
| 15 | 1.1.13 | Lease |  | 2d? | 2011-05-20 | 2011-05-23 |  |  |  | -4d | 0d | VladL | 16h |
| 16 | 1.1.14 | Application |  | 2d? | 2011-05-24 | 2011-05-25 | 15 |  |  | -4d | 0d | VladL | 16h |
| 17 | 1.1.15 | Employee |  | 2d? | 2011-06-27 | 2011-06-28 |  |  |  | 4d |  | VladL | 16h |
| 18 | 1.1.16 | Vendor | inactive | 2d? | 2011-06-29 | 2011-06-30 |  |  |  | 2d |  | VladL | 16h |
| 19 | 1.1.17 | Contract |  | 2d? | 2011-07-01 | 2011-07-04 |  |  |  | 0d |  | VladL | 16h |
| 20 | 1.1.18 | Concession |  | 1d? | 2011-05-20 | 2011-05-20 |  |  |  | 31d |  | VladL | 8h |
| 21 | 1.2 | **Policies** |  | 2d | 2011-05-20 | 2011-05-23 |  |  |  |  |  |  | 392h |
| 22 | 1.2.1 | Project Plan for Policies |  | 1d | 2011-05-20 | 2011-05-20 |  |  |  | 1d |  | ArturR | 8h |
| 23 | 1.2.2 | Policy Framework Design |  | 14d | 2011-05-23 | 2011-06-09 |  |  |  | -13d | 0d | ArturR | 112h |
| 24 | 1.2.3 | Policy related framework - navigate, list, search, duplicate, edit | manual | 5d | 2011-05-20 | 2011-05-26 |  |  |  |  |  |  |  |

Notes:
- 4: This is not critical for Beta version
- 5: This is not critical for Beta version
- 11: Out for Scope for Betta
- 18: This is not critical for Beta version
- 20: - Concessions must be approved / - available time interval (i.e. concession available for new applications within next 2 weeks) / - description (1 month free, 10% off, free TV, etc) / - conbcession value (cost of TV, actual cost of 1 month rent) / - rules on how to incorporate concession to the lease (free 13th month, or apply equal discounts to every month, etc)

| ID | WBS | Task | Type | Duration | Start | Finish | Total slack | Free slack | Resources | Work |
| --- | --- | --- | --- | --- | --- | --- | --- | --- | --- | --- |
| 25 | 1.2.4 | **Lease Application** |  | 31d? | 2011-05-20 | 2011-07-01 | -29d | 0d |  | 248h |
| 26 | 1.2.4.1 | Identification documents |  | 1d? | 2011-05-20 | 2011-05-20 | 1d |  | ArturR | 8h |
| 27 | 1.2.4.2 | Proof documents | manual | 1d? | 2011-05-20 | 2011-05-20 |  |  |  |  |
| 28 | 1.2.4.3 | Document Req After Submit |  | 1d? | 2011-05-20 | 2011-05-20 | 1d |  | ArturR | 8h |
| 29 | 1.2.4.4 | Employment Req |  | 1d? | 2011-05-20 | 2011-05-20 | 1d |  | ArturR | 8h |
| 30 | 1.2.4.5 | Residency Req |  | 1d? | 2011-05-20 | 2011-05-20 | 1d |  | ArturR | 8h |
| 31 | 1.2.4.6 | Garantor Req |  | 1d? | 2011-05-20 | 2011-05-20 | 1d |  | ArturR | 8h |
| 32 | 1.2.4.7 | Equifax Preapproval Requirements |  | 2d | 2011-06-14 | 2011-06-15 | -17d | 0d | ArturR | 16h |
| 33 | 1.2.4.8 | Deposit Calculation Formula |  | 2d | 2011-06-16 | 2011-06-17 | -19d | 0d | ArturR | 16h |
| 34 | 1.2.4.9 | Security Deposit Formula | manual | 1d? | 2011-05-20 | 2011-05-20 |  |  |  |  |
| 35 | 1.2.4.10 | Legal/Collections |  | 2d | 2011-06-20 | 2011-06-21 | -21d | 0d | ArturR | 16h |
| 36 | 1.2.4.11 | Kids |  | 2d | 2011-06-22 | 2011-06-23 | -23d | 0d | ArturR | 16h |
| 37 | 1.2.4.12 | Late Fees |  | 2d | 2011-06-24 | 2011-06-27 | -25d | 0d | ArturR | 16h |
| 38 | 1.2.4.13 | Usage Fees |  | 2d | 2011-06-28 | 2011-06-29 | -27d | 0d | ArturR | 16h |
| 39 | 1.2.4.14 | Prorate |  | 2d | 2011-06-30 | 2011-07-01 | -29d | 0d | ArturR | 16h |
| 40 | 1.2.4.15 | Pets Charge |  | 2d | 2011-06-10 | 2011-06-13 | -15d | 0d | ArturR | 16h |
| 41 | 1.2.4.16 | Pet Type and Number |  | 2d | 2011-05-20 | 2011-05-23 | 0d |  | ArturR | 16h |
| 42 | 1.2.4.17 | Docs To Be Given To Tenant |  | 2d | 2011-05-20 | 2011-05-23 | 0d |  | ArturR | 16h |
| 43 | 1.2.4.18 | Devices |  | 1d? | 2011-05-20 | 2011-05-20 | 1d |  | ArturR | 8h |
| 44 | 1.2.4.19 | Limit Number of Tenants |  | 1d? | 2011-05-20 | 2011-05-20 | 1d |  | ArturR | 8h |
| 45 | 1.2.4.20 | Accepted Payment Types |  | 1d? | 2011-05-20 | 2011-05-20 | 1d |  | ArturR | 8h |
| 46 | 1.2.4.21 | Application Fee |  | 1d? | 2011-05-20 | 2011-05-20 | 1d |  | ArturR | 8h |
| 47 | 1.2.4.22 | Lease Term Formula |  | 1d? | 2011-05-20 | 2011-05-20 | 1d |  | ArturR | 8h |
| 48 | 1.2.4.23 | Lease Termination Period |  | 1d? | 2011-05-20 | 2011-05-20 | 1d |  | ArturR | 8h |

Notes:
- 26: Policy lists acceptable government documents: passport, driver licence, immigration paper
- 27: Policy lists required or optional proof documents: proof of income (T4, employee letter), proof of residence (utility bill), proof of asset (bank statement, bank letter)
- 28: Policy specifies conditions for which additional documents are required to be provided. For example, at the certain level of income or assets, we may need to ask PT to provide additional source of income or proof of additional asset.
- 29: Policy specifies length of time for the employment history. For example, if this policy specifies 3 years and person 1st employment data shows he worked for 2 years, either warning will pop up to prompt the person to enter previous employment info.
- 30: Policy specifies length of time for the resident history. For example, if this policy specifies 3 years and person 1st place of residence shows he lived there for 2 years, warning will pop up to prompt the person to enter previous residence.
- 31: Specifies qualitative and quantitative conditions for which guarantor is required.
- 32: Policy secifies algorithm to preapprove PT. Here user should be able to specify a set of parameter values in equifax report sufficient to approve
- 33: Specifies first, last, or first and last month rent as deposit
- 34: Specify formula to calculate security deposit. Could be ammount of dollars or % of rent
- 35: Specifies all rules and procedures related to tenant breaking the regulations and rules. Tenant needs to accept the receipt of the content of this policy.
- 36: Policy may limit building to adults only, for example a retirement building
- 37: Policy will define what is late and any fines associated with late payments
- 38: If any amenity/utility has usage fees/deposit this policy will identify that.
- 39: Prorate policy identifies formula to calculate prorate rent.
- 40: Pet charge policy identifies pet fee or pet deposit. May specify different charges depending on pet size/weight.
- 41: Specifies allowed pets as well as their maximum numbers, for example 2 pets per unit, allowed dog, cat, bird
- 42: Policy defines list of documents to be given to tenant upon lease signing/ move in. Tenant has to sign that he received every document in the package
- 43: Tenant may need to be given a number of devices: access keys/cards, equipment, etc. that have deposit associated with them.
- 44: Define maximum number of tenants for a unit type or per bedroom
- 45: PM may accept only certain payment types.
- 46: Define the application fee
- 47: Formula for calculating rent for other lease terms (ex. 6 months, 9 months, 18 months)
- 48: Define the minimum length of time that a notice can be given. Usually 60 days.

| ID | WBS | Task | Type | Duration | Start | Finish | Predecessors | Complete | Total slack | Free slack | Resources | Work |
| --- | --- | --- | --- | --- | --- | --- | --- | --- | --- | --- | --- | --- |
| 49 | 1.2.5 | **Post-approval and Tenancy** |  | 1d? | 2011-05-20 | 2011-05-20 |  |  | 1d |  |  | 24h |
| 50 | 1.2.5.1 | Change Accepted Payment Types |  | 1d? | 2011-05-20 | 2011-05-20 |  |  | 1d |  | ArturR | 8h |
| 51 | 1.2.5.2 | Tenant insurance requirements |  | 1d? | 2011-05-20 | 2011-05-20 |  |  | 1d |  | ArturR | 8h |
| 52 | 1.2.5.3 | Hydro requirements |  | 1d? | 2011-05-20 | 2011-05-20 |  |  | 1d |  | ArturR | 8h |
| 53 | 1.2.5.4 | Pre-move In Inspection Requirement |  | 1d? | 2011-05-20 | 2011-05-20 |  |  | 1d |  |  |  |
| 54 | 1.3 | **Business Processes** |  | 2d | 2011-05-20 | 2011-05-23 |  |  |  |  |  | 224h |
| 55 | 1.3.1 | Application Approval |  | 2d | 2011-05-26 | 2011-05-27 | 16 |  | -4d | 0d | VladS; MichaelL | 32h |
| 56 | 1.3.2 | Move In |  | 3d | 2011-05-20 | 2011-05-24 |  |  | -1d | 0d | VladS; MichaelL | 32h |
| 57 | 1.3.3 | Notice |  | 3d | 2011-05-24 | 2011-05-30 |  |  | -5d | 0d | VladS; MichaelL | 32h |
| 58 | 1.3.4 | Move Out |  | 3d | 2011-05-30 | 2011-06-01 |  |  | -7d | 0d | VladS; MichaelL | 32h |
| 59 | 1.3.5 | Off Market Statuses |  | 3d | 2011-06-01 | 2011-06-03 |  |  | -9d | 0d | VladS; MichaelL | 32h |
| 60 | 1.3.6 | Parking/Storage Assignment |  | 3d | 2011-06-03 | 2011-06-07 |  |  | -11d | 0d | MichaelL; VladS | 32h |
| 61 | 1.3.7 | Resource Booking |  | 3d | 2011-06-07 | 2011-06-09 |  |  | -13d | 0d | MichaelL; VladS | 32h |
| 62 | 1.3.8 | Inquiry Management |  | 2d | 2011-05-20 | 2011-05-23 |  |  | 0d |  |  |  |
| 63 | 1.3.9 | Lease Application Management |  | 2d | 2011-05-20 | 2011-05-23 |  |  | 0d |  |  |  |
| 64 | 1.3.10 | Vacant Unit Scoping |  | 2d | 2011-05-20 | 2011-05-23 |  |  | 0d |  |  |  |
| 65 | 1.4 | **Profile** |  | 1d | 2011-05-20 | 2011-05-20 |  |  |  |  |  |  |
| 66 | 1.4.1 | Change Email, Password |  | 1d | 2011-05-20 | 2011-05-20 |  |  | 0d |  |  |  |
| 67 | 1.5 | **Preferences** |  | 1d | 2011-05-20 | 2011-05-20 |  |  |  |  |  |  |
| 68 | 1.5.1 | Notifications settings |  | 1d | 2011-05-20 | 2011-05-20 |  |  | 0d |  |  |  |
| 69 | 1.6 | **PM Settings** |  | 1d | 2011-05-20 | 2011-05-20 |  |  |  |  |  |  |
| 70 | 1.6.1 | Details |  | 1d | 2011-05-20 | 2011-05-20 |  |  | 0d |  |  |  |
| 71 | 1.6.2 | Policy Management |  | 1d | 2011-05-20 | 2011-05-20 |  |  | 0d |  |  |  |
| 72 | 1.6.3 | **CMS for Portal** |  | 1d | 2011-05-20 | 2011-05-20 |  |  |  |  |  |  |
| 73 | 1.6.3.1 | General Tenant Portal Properties |  | 1d | 2011-05-20 | 2011-05-20 |  |  | 0d |  |  |  |
| 74 | 1.6.3.2 | Site Map Tree with Editing Capabilities |  | 1d | 2011-05-20 | 2011-05-20 |  |  | 0d |  |  |  |
| 75 | 1.6.3.3 | Editor to define Static Pages |  | 1d | 2011-05-20 | 2011-05-20 |  |  | 0d |  |  |  |
| 76 | 1.6.3.4 | Rich Text Editor component with image upload and filters |  | 1d | 2011-05-20 | 2011-05-20 |  |  | 0d |  |  |  |
| 77 | 1.6.3.5 | Style/Skin Editor |  | 1d | 2011-05-20 | 2011-05-20 |  |  | 0d |  |  |  |
| 78 | 1.7 | Alerts/Notifications | manual | 2d | 2011-05-20 | 2011-05-23 |  |  |  |  |  |  |
| 79 | 1.8 | Mails |  | 1d? | 2011-05-20 A | 2011-05-20 A |  | 100% |  |  |  |  |

Notes:
- 50: some payment types maybe disallowed during tenancy (for example, upon EFT bounce, no more EFT for this tenant)
- 51: If mandatory, need the proof of tenant insurance before move-in
- 52: Need proof that tenant set up a hydro account before move in
- 53: Tenant maybe required to inspect the unit pre-move in and sign the inspection form.
- 55: http://propertyvista.jira.com/wiki/display/VISTA/PT+Approval+Process
- 61: Booking elevator, booking party room, booking pool (for example for birthday party), etc.

| ID | WBS | Task | Duration | Start | Finish | Total slack | Free slack | Resources | Work |
| --- | --- | --- | --- | --- | --- | --- | --- | --- | --- |
| 80 | 1.9 | **UI Framework Components and Functionality** | 1d | 2011-05-20 | 2011-05-20 |  |  |  |  |
| 81 | 1.9.1 | Recent Activities | 1d | 2011-05-20 | 2011-05-20 | 0d |  |  |  |
| 82 | 1.9.2 | Favorites | 1d | 2011-05-20 | 2011-05-20 | 0d |  |  |  |
| 83 | 1.9.3 | Lister Header - sorting, column selector | 1d | 2011-05-20 | 2011-05-20 | 0d |  |  |  |
| 84 | 1.9.4 | Search Filters | 1d | 2011-05-20 | 2011-05-20 | 0d |  |  |  |
| 85 | 1.9.5 | Text Search | 1d | 2011-05-20 | 2011-05-20 | 0d |  |  |  |
| 86 | 1.10 | **Dashboard/Report** | 2d | 2011-05-20 | 2011-05-23 |  |  |  |  |
| 87 | 1.10.1 | **Gadgets** | 1d | 2011-05-20 | 2011-05-20 |  |  |  |  |
| 88 | 1.10.1.1 | Lister | 1d | 2011-05-20 | 2011-05-20 | 0d |  |  |  |
| 89 | 1.10.1.2 | Pie Chart | 1d | 2011-05-20 | 2011-05-20 | 0d |  |  |  |
| 90 | 1.10.1.3 | Bar Chart | 1d | 2011-05-20 | 2011-05-20 | 0d |  |  |  |
| 91 | 1.10.1.4 | Line Chart | 1d | 2011-05-20 | 2011-05-20 | 0d |  |  |  |
| 92 | 1.10.1.5 | Notifications Gadget | 1d | 2011-05-20 | 2011-05-20 | 0d |  |  |  |
| 93 | 1.10.1.6 | Alerts Gadget | 1d | 2011-05-20 | 2011-05-20 | 0d |  |  |  |
| 94 | 1.10.2 | Dashboard Management | 1d | 2011-05-20 | 2011-05-20 | 1d |  |  |  |
| 95 | 1.10.3 | Report Management | 1d | 2011-05-20 | 2011-05-20 | 1d |  |  |  |
| 96 | 2 | **Tenant Portal** | 1d? | 2011-05-20 | 2011-05-20 |  |  |  | 48h |
| 97 | 2.1 | **General Site Design** | 1d | 2011-05-20 | 2011-05-20 |  |  |  | 48h |
| 98 | 2.1.1 | Site Map | 1d | 2011-05-20 | 2011-05-20 | 0d |  | VadimS | 8h |
| 99 | 2.1.2 | Styles | 1d | 2011-05-23 | 2011-05-23 | -1d | 0d | VadimS | 8h |
| 100 | 2.1.3 | Maps | 1d | 2011-05-24 | 2011-05-24 | -2d | 0d | VadimS | 8h |
| 101 | 2.1.4 | Picture Views | 1d | 2011-05-25 | 2011-05-25 | -3d | 0d | VadimS | 8h |
| 102 | 2.1.5 | Site Layout | 1d | 2011-05-26 | 2011-05-26 | -4d | 0d | VadimS | 8h |
| 103 | 2.1.6 | Province Selection Map | 1d | 2011-05-20 | 2011-05-20 | 0d |  | MichaelL | 8h |

| ID | WBS | Task | Type | Duration | Start | Finish | Total slack | Free slack |
| --- | --- | --- | --- | --- | --- | --- | --- | --- |
| 104 | 2.2 | **Functionality** |  | 1d? | 2011-05-20 | 2011-05-20 |  |  |
| 105 | 2.2.1 | Apartment Lister |  | 1d | 2011-05-20 | 2011-05-20 | 0d |  |
| 106 | 2.2.2 | Apartment Details |  | 1d | 2011-05-20 | 2011-05-20 | 0d |  |
| 107 | 2.2.3 | Unit Details |  | 1d | 2011-05-20 | 2011-05-20 | 0d |  |
| 108 | 2.2.4 | Apply for Lease |  | 1d | 2011-05-20 | 2011-05-20 | 0d |  |
| 109 | 2.2.5 | Inqiuary |  | 1d | 2011-05-20 | 2011-05-20 | 0d |  |
| 110 | 2.2.6 | Waiting List |  | 1d | 2011-05-20 | 2011-05-20 | 0d |  |
| 111 | 2.2.7 | **Current application status, progress, approval process** |  | 1d? | 2011-05-20 | 2011-05-20 |  |  |
| 112 | 2.2.7.1 | Status page |  | 1d | 2011-05-20 | 2011-05-20 | 0d |  |
| 113 | 2.2.7.2 | Show and sign the lease |  | 2d? | 2011-05-20 | 2011-05-23 | -1d | 0d |
| 114 | 2.2.7.3 | Confirm PAP(Preauthorised Payment Plan) method |  | 2d? | 2011-05-20 | 2011-05-23 | -1d | 0d |
| 115 | 2.2.7.4 | Schedule move-in date |  | 2d? | 2011-05-20 | 2011-05-23 | -1d | 0d |
| 116 | 2.2.7.5 | Confirming Tenant Insurance and Hydro |  | 2d? | 2011-05-20 | 2011-05-23 | -1d | 0d |
| 117 | 2.2.7.6 | UPSELL page for PV to make profit through alliances |  | 2d? | 2011-05-20 | 2011-05-23 | -1d | 0d |
| 118 | 2.2.8 | Maintanance call |  | 2d | 2011-05-20 | 2011-05-23 | -1d | 0d |
| 119 | 2.2.9 | **Payments** |  | 1d? | 2011-05-20 | 2011-05-20 |  |  |
| 120 | 2.2.9.1 | Payment method editor |  | 1d? | 2011-05-20 | 2011-05-20 | 0d |  |
| 121 | 2.2.9.2 | Payment history |  | 1d? | 2011-05-20 | 2011-05-20 | 0d |  |
| 122 | 2.2.9.3 | Current/Outstanding charges |  | 1d? | 2011-05-20 | 2011-05-20 | 0d |  |
| 123 | 2.2.10 | My Account | manual | 1d? | 2011-05-20 | 2011-05-20 |  |  |
| 124 | 2.2.11 | Notice etc... | manual | 1d? | 2011-05-20 | 2011-05-20 |  |  |
| 125 | 2.2.12 | Static Content Presentation |  | 1d | 2011-05-20 | 2011-05-20 | 0d |  |
| 126 | 3 | **PT Wizard** |  | 2d? | 2011-05-20 | 2011-05-23 |  |  |
| 127 | 3.1 | Mail Notifications and Invitations |  | 1d | 2011-05-20 | 2011-05-20 | 1d |  |
| 128 | 3.2 | Co-Signer Flow |  | 1d | 2011-05-20 | 2011-05-20 | 1d |  |
| 129 | 3.3 | Support IE7 |  | 1d? | 2011-05-20 | 2011-05-20 | 1d |  |

Notes:
- 111: http://propertyvista.jira.com/wiki/display/VISTA/PT+Approval+Process
- 117: Cable / Internet / Phone / Cell Phone / Tenant Insurance / Car Insurance

| ID | WBS | Task | Type | Duration | Start | Finish | Total slack |
| --- | --- | --- | --- | --- | --- | --- | --- |
| 130 | 4 | **Server** |  | 1d? | 2011-05-20 | 2011-05-20 |  |
| 131 | 4.1 | CRUD Functionality Services |  | 1d? | 2011-05-20 | 2011-05-20 | 0d |
| 132 | 4.2 | DNS selector for PM |  | 1d? | 2011-05-20 | 2011-05-20 | 0d |
| 133 | 4.3 | Eqifax |  | 1d? | 2011-05-20 | 2011-05-20 | 0d |
| 134 | 4.4 | Vista Corporate Site for PM Sign-up, Account configuration, Corporate-wise Policy Definition | inactive, manual | 1d? | 2011-05-20 | 2011-05-20 |  |
